# Software Development Plan

Schedule from MS Project, 2014-07-24 to 2014-08-29.

## Calendars

- Standard: Mon-Fri 08:00-12:00, 13:00-17:00; Sat-Sun 08:00-16:00.

## Resources

| Resource |
| --- |
| Akshay Kalyan |
| Matthew Chiam |
| Tommy Ngo |
| Nicholas Weatherburn |
| Michael Shafer |
| James Butler |
| Hugo Bateman |
| Bert Huang |
| Team |

## Schedule

| ID | WBS | Task | Type | Duration | Start | Finish | Predecessors | Total slack | Free slack | Resources | Work |
| --- | --- | --- | --- | --- | --- | --- | --- | --- | --- | --- | --- |
| 1 | 1 | Start | milestone | 0d | 2014-07-24 | 2014-07-24 |  | 1d | 0d |  |  |
| 2 | 2 | **Organisational Tasks** |  | 36d | 2014-07-24 | 2014-08-28 |  | 0d |  |  | 224h |
| 3 | 2.1 | **Meeting** |  | 36d | 2014-07-24 | 2014-08-28 |  | 0d |  |  | 88h |
| 4 | 2.1.1 | Meeting 1 |  | 1d | 2014-07-24 | 2014-07-24 |  | 35d |  | Team | 8h |
| 5 | 2.1.2 | Meeting 2 | manual | 1d | 2014-07-28 | 2014-07-28 |  |  |  | Team | 8h |
| 6 | 2.1.3 | Meeting 3 | manual | 1d | 2014-07-31 | 2014-07-31 |  |  |  | Team | 8h |
| 7 | 2.1.4 | Meeting 4 | manual | 1d | 2014-08-04 | 2014-08-04 |  |  |  | Team | 8h |
| 8 | 2.1.5 | Meeting 5 | manual | 1d | 2014-08-07 | 2014-08-07 |  |  |  | Team | 8h |
| 9 | 2.1.6 | Meeting 6 | manual | 1d | 2014-08-11 | 2014-08-11 |  |  |  | Team | 8h |
| 10 | 2.1.7 | Meeting 7 | manual | 1d | 2014-08-14 | 2014-08-14 |  |  |  | Team | 8h |
| 11 | 2.1.8 | Meeting 8 | manual | 1d | 2014-08-18 | 2014-08-18 |  |  |  | Team | 8h |
| 12 | 2.1.9 | Meeting 9 | manual | 1d | 2014-08-21 | 2014-08-21 |  |  |  | Team | 8h |
| 13 | 2.1.10 | Meeting 10 | manual | 1d | 2014-08-25 | 2014-08-25 |  |  |  | Team | 8h |
| 14 | 2.1.11 | Meeting 11 | manual | 1d | 2014-08-28 | 2014-08-28 |  |  |  | Team | 8h |
| 15 | 2.2 | **Presentation** |  | 29d | 2014-07-31 | 2014-08-28 |  | 0d |  |  | 136h |
| 16 | 2.2.1 | Presentation 1 | manual | 1d | 2014-07-31 | 2014-07-31 |  |  |  | Matthew Chiam; Akshay Kalyan; Nicholas Weatherburn; Hugo Bateman | 32h |
| 17 | 2.2.2 | Presentation 2 | manual | 1d | 2014-08-07 | 2014-08-07 |  |  |  | James Butler; Tommy Ngo; Bert Huang | 24h |
| 18 | 2.2.3 | Presentation 3 | manual | 1d | 2014-08-14 | 2014-08-14 |  |  |  | Michael Shafer; Matthew Chiam; Nicholas Weatherburn | 24h |
| 19 | 2.2.4 | Presentation 4 | manual | 1d | 2014-08-21 | 2014-08-21 |  |  |  | Akshay Kalyan; Hugo Bateman; James Butler | 24h |
| 20 | 2.2.5 | Presentation 5 | manual | 1d | 2014-08-28 | 2014-08-28 |  |  |  | Michael Shafer; Matthew Chiam; Hugo Bateman; Nicholas Weatherburn | 32h |
| 21 | 3 | **Create Wiki** |  | 2d | 2014-07-24 | 2014-07-25 |  | 1d |  |  | 32h |
| 22 | 3.1 | Initialize Wiki for Project |  | 1d | 2014-07-24 | 2014-07-24 | 1 | 1d | 0d | Akshay Kalyan | 8h |
| 23 | 3.2 | Write Git Workflow Article |  | 1d | 2014-07-25 | 2014-07-25 | 22 | 1d | 0d | Michael Shafer | 8h |
| 24 | 3.3 | Write C++ Style Guide |  | 1d | 2014-07-25 | 2014-07-25 | 22 | 1d | 0d | Nicholas Weatherburn | 8h |
| 25 | 3.4 | Write Python Style Guide |  | 1d | 2014-07-25 | 2014-07-25 | 22 | 1d | 0d | Akshay Kalyan | 8h |

| ID | WBS | Task | Duration | Start | Finish | Predecessors | Total slack | Free slack | Resources | Work |
| --- | --- | --- | --- | --- | --- | --- | --- | --- | --- | --- |
| 26 | 4 | **General Training** | 1d | 2014-07-25 | 2014-07-25 |  | 1d |  |  | 8h |
| 27 | 4.1 | Basic ROS Tutorials | 1d | 2014-07-25 | 2014-07-25 | 22 | 1d | 0d | Team | 8h |
| 28 | 5 | **Specialised Training** | 3d | 2014-07-26 | 2014-07-28 |  | 1d |  |  | 192h |
| 29 | 5.1 | Run ROS Pathfinding Tutorial | 3d | 2014-07-26 | 2014-07-28 | 23, 24, 25, 27 | 1d | 0d | Tommy Ngo; Nicholas Weatherburn | 48h |
| 30 | 5.2 | Run ROS Services Tutorial | 3d | 2014-07-26 | 2014-07-28 | 23, 24, 25, 27 | 1d | 0d | Matthew Chiam | 24h |
| 31 | 5.3 | Run ROS Messages Tutorial | 3d | 2014-07-26 | 2014-07-28 | 23, 24, 25, 27 | 1d | 0d | Akshay Kalyan | 24h |
| 32 | 5.4 | Run ROS Stage Tutorial | 3d | 2014-07-26 | 2014-07-28 | 23, 24, 25, 27 | 1d | 0d | Bert Huang | 24h |
| 33 | 5.5 | Run ROS Build Tutorial | 3d | 2014-07-26 | 2014-07-28 | 23, 24, 25, 27 | 1d | 0d | James Butler | 24h |
| 34 | 5.6 | Run ROS Roslaunch Tutorial | 3d | 2014-07-26 | 2014-07-28 | 23, 24, 25, 27 | 1d | 0d | Michael Shafer; Hugo Bateman | 48h |
| 35 | 6 | **Project Implementation Alpha Release** | 16d | 2014-07-29 | 2014-08-13 |  | 1d |  |  | 424h |
| 36 | 6.1 | **Design System Architecture** | 5d | 2014-07-29 | 2014-08-02 |  | 1d |  |  | 64h |
| 37 | 6.1.1 | Design Robot Class Hierarchy | 1d | 2014-07-29 | 2014-07-29 | 29, 34, 30, 31, 32, 33 | 1d | 0d | Team | 8h |
| 38 | 6.1.2 | Design World | 1d | 2014-07-29 | 2014-07-29 | 29, 30, 31, 32, 33, 34 | 7d | 0d |  |  |
| 39 | 6.1.3 | Design Robot Appearance | 1d | 2014-07-29 | 2014-07-29 | 29, 34, 30, 31, 32, 33 | 5d | 0d | Team | 8h |
| 40 | 6.1.4 | **Design Robot Behaviours** | 4d | 2014-07-30 | 2014-08-02 |  | 1d |  |  | 48h |
| 41 | 6.1.4.1 | Design General Robot Behaviour | 3d | 2014-07-30 | 2014-08-01 | 37, 29, 34 | 1d | 0d | Team | 24h |
| 42 | 6.1.4.2 | Design Assistant Robot Behaviour | 1d | 2014-08-02 | 2014-08-02 | 41, 29, 34 | 1d | 0d | Team | 8h |
| 43 | 6.1.4.3 | Design Visitor Robot Behaviour | 1d | 2014-08-02 | 2014-08-02 | 41, 29, 34 | 1d | 0d | Team | 8h |
| 44 | 6.1.4.4 | Design Resident Robot Behaviour | 1d | 2014-08-02 | 2014-08-02 | 41, 29, 34 | 1d | 0d | Team | 8h |
| 45 | 6.2 | **Robot Implementation, Testing, Documentation** | 5d | 2014-08-02 | 2014-08-06 |  | 1d |  |  | 128h |
| 46 | 6.2.1 | Implement ‘General’ Robot | 4d | 2014-08-02 | 2014-08-05 | 41, 39 | 2d | 1d | Nicholas Weatherburn | 32h |
| 47 | 6.2.2 | Implement Resident Robot | 4d | 2014-08-03 | 2014-08-06 | 44, 39 | 1d | 0d | Tommy Ngo | 32h |
| 48 | 6.2.3 | Implement Visitor Robot | 4d | 2014-08-03 | 2014-08-06 | 43, 39 | 1d | 0d | James Butler | 32h |
| 49 | 6.2.4 | Implement Assistant Robot | 4d | 2014-08-03 | 2014-08-06 | 42, 39 | 1d | 0d | Michael Shafer | 32h |

| ID | WBS | Task | Type | Duration | Start | Finish | Predecessors | Total slack | Free slack | Resources | Work |
| --- | --- | --- | --- | --- | --- | --- | --- | --- | --- | --- | --- |
| 50 | 6.3 | **World Creation** |  | 2d | 2014-07-30 | 2014-07-31 |  | 7d |  |  | 32h |
| 51 | 6.3.1 | Create PGM File |  | 2d | 2014-07-30 | 2014-07-31 | 32, 37, 38, 39 | 7d | 6d | Bert Huang | 16h |
| 52 | 6.3.2 | Create World Objects |  | 2d | 2014-07-30 | 2014-07-31 | 32, 37, 38, 39 | 7d | 6d | Bert Huang | 16h |
| 53 | 6.4 | **Communications** |  | 2d | 2014-07-30 | 2014-07-31 |  | 7d |  |  | 48h |
| 54 | 6.4.1 | Create Basic ROS Topics |  | 2d | 2014-07-30 | 2014-07-31 | 30, 31, 37, 38, 39 | 7d | 6d | Matthew Chiam | 16h |
| 55 | 6.4.2 | Create Basic ROS Services |  | 2d | 2014-07-30 | 2014-07-31 | 30, 31, 37, 38, 39 | 7d | 6d | Matthew Chiam | 16h |
| 56 | 6.4.3 | Create Basic ROS Messages |  | 2d | 2014-07-30 | 2014-07-31 | 31, 30, 37, 38, 39 | 7d | 6d | Akshay Kalyan | 16h |
| 57 | 6.5 | **Integration Between World And Robots** |  | 3d | 2014-08-07 | 2014-08-09 |  | 1d |  |  | 24h |
| 58 | 6.5.1 | Integration Between World And Robots |  | 3d | 2014-08-07 | 2014-08-09 | 46, 47, 48, 49, 51, 52, 54, 55, 56 | 1d | 0d | Michael Shafer | 24h |
| 59 | 6.6 | **Build Tasks** |  | 4d | 2014-07-30 | 2014-08-02 |  | 8d |  |  | 96h |
| 60 | 6.6.1 | Create Build Scripts |  | 4d | 2014-07-30 | 2014-08-02 | 33, 37, 38, 39 | 8d | 0d | Michael Shafer | 32h |
| 61 | 6.6.2 | Test Build Scripts |  | 2d | 2014-07-30 | 2014-07-31 | 33, 60SS | 8d | 0d | Michael Shafer | 16h |
| 62 | 6.6.3 | Run/Launch Build Scripts |  | 2d | 2014-08-01 | 2014-08-02 | 61, 33 | 8d | 7d | James Butler | 16h |
| 63 | 6.6.4 | Create Convenience Scripts |  | 4d | 2014-07-30 | 2014-08-02 | 33, 37, 38, 39 | 8d | 7d | Hugo Bateman | 32h |
| 64 | 6.7 | **Acceptance Testing** |  | 4d | 2014-08-10 | 2014-08-13 |  | 1d |  |  | 32h |
| 65 | 6.7.1 | Acceptance Testing Of Alpha Release |  | 4d | 2014-08-10 | 2014-08-13 | 58, 62, 63 | 1d |  | Team | 32h |
| 66 | 7 | Alpha Release | milestone, manual | 0d | 2014-08-15 | 2014-08-15 | 65 |  |  |  |  |
| 67 | 8 | **Project Implementation Final Release** |  | 14d | 2014-08-15 | 2014-08-28 |  | 0d |  |  | 992h |
| 68 | 8.1 | **Design System Architecture** |  | 2d | 2014-08-15 | 2014-08-16 |  | 0d |  |  | 192h |
| 69 | 8.1.1 | Design Robot Class Hierarchy |  | 2d | 2014-08-15 | 2014-08-16 | 66 | 0d |  | Team | 16h |
| 70 | 8.1.2 | Design World |  | 2d | 2014-08-15 | 2014-08-16 | 66 | 3d | 0d | Team | 16h |
| 71 | 8.1.3 | Design Innovative Feature |  | 2d | 2014-08-15 | 2014-08-16 | 66 | 0d |  | Team | 16h |
| 72 | 8.1.4 | **Design Robot Behaviours** |  | 2d | 2014-08-15 | 2014-08-16 |  | 0d |  |  | 144h |
| 73 | 8.1.4.1 | Design Resident Robot Behaviour |  | 2d | 2014-08-15 | 2014-08-16 | 66 | 0d |  | Team | 16h |
| 74 | 8.1.4.2 | Design Friend Robot Behaviour |  | 2d | 2014-08-15 | 2014-08-16 | 66 | 0d |  | Team | 16h |
| 75 | 8.1.4.3 | Design Relative Robot Behaviour |  | 2d | 2014-08-15 | 2014-08-16 | 66 | 0d |  | Team | 16h |
| 76 | 8.1.4.4 | Design Doctor Robot Behaviour |  | 2d | 2014-08-15 | 2014-08-16 | 66 | 0d |  | Team | 16h |
| 77 | 8.1.4.5 | Design Nurse Robot Behaviour |  | 2d | 2014-08-15 | 2014-08-16 | 66 | 0d |  | Team | 16h |
| 78 | 8.1.4.6 | Design Medication Assistant Robot Behaviour |  | 2d | 2014-08-15 | 2014-08-16 | 66 | 0d |  | Team | 16h |
| 79 | 8.1.4.7 | Design Cook Assistant Robot Behaviour |  | 2d | 2014-08-15 | 2014-08-16 | 66 | 0d |  | Team | 16h |
| 80 | 8.1.4.8 | Design Companion Assistant Robot Behaviour |  | 2d | 2014-08-15 | 2014-08-16 | 66 | 0d |  | Team | 16h |
| 81 | 8.1.4.9 | Design Entertainment Assistant Robot Behaviour |  | 2d | 2014-08-15 | 2014-08-16 | 66 | 0d |  | Team | 16h |

| ID | WBS | Task | Duration | Start | Finish | Predecessors | Total slack | Free slack | Resources | Work |
| --- | --- | --- | --- | --- | --- | --- | --- | --- | --- | --- |
| 82 | 8.2 | **Robot Implementation** | 7d | 2014-08-17 | 2014-08-23 |  | 0d |  |  | 560h |
| 83 | 8.2.1 | Implement Resident Robot | 7d | 2014-08-17 | 2014-08-23 | 73, 69 | 0d |  | Nicholas Weatherburn | 56h |
| 84 | 8.2.2 | Implement Friend Robot | 7d | 2014-08-17 | 2014-08-23 | 74, 69 | 0d |  | Michael Shafer | 56h |
| 85 | 8.2.3 | Implement Relative Robot | 7d | 2014-08-17 | 2014-08-23 | 75, 69 | 0d |  | Michael Shafer | 56h |
| 86 | 8.2.4 | Implement Doctor Robot | 7d | 2014-08-17 | 2014-08-23 | 76, 69 | 0d |  | Tommy Ngo | 56h |
| 87 | 8.2.5 | Implement Nurse Robot | 7d | 2014-08-17 | 2014-08-23 | 77, 69 | 0d |  | James Butler | 56h |
| 88 | 8.2.6 | Implement Medication Assistant Robot | 7d | 2014-08-17 | 2014-08-23 | 78, 69 | 0d |  | Hugo Bateman | 56h |
| 89 | 8.2.7 | Implement Cook Assistant Robot | 7d | 2014-08-17 | 2014-08-23 | 79, 69 | 0d |  | Bert Huang | 56h |
| 90 | 8.2.8 | Implement Entertainment Assistant Robot | 7d | 2014-08-17 | 2014-08-23 | 81, 69 | 0d |  | Akshay Kalyan | 56h |
| 91 | 8.2.9 | Implement Innovative Feature | 7d | 2014-08-17 | 2014-08-23 | 71 | 0d |  | Tommy Ngo | 56h |
| 92 | 8.2.10 | Implement Companion Assistant Robot | 7d | 2014-08-17 | 2014-08-23 | 80, 69 | 0d |  | Matthew Chiam | 56h |
| 93 | 8.3 | **World Creation** | 4d | 2014-08-17 | 2014-08-20 |  | 3d |  |  | 48h |
| 94 | 8.3.1 | Add House Objects | 2d | 2014-08-17 | 2014-08-18 | 70 | 3d | 0d | Bert Huang | 16h |
| 95 | 8.3.2 | Implement Stage Node | 2d | 2014-08-17 | 2014-08-18 | 70 | 5d |  | Bert Huang | 16h |
| 96 | 8.3.3 | Add Attributes For House Objects | 2d | 2014-08-19 | 2014-08-20 | 94 | 3d |  | Bert Huang | 16h |
| 97 | 8.4 | **Communications** | 4d | 2014-08-17 | 2014-08-20 |  | 3d |  |  | 96h |
| 98 | 8.4.1 | Create ROS Topics | 4d | 2014-08-17 | 2014-08-20 | 73, 74, 75, 76, 77, 78, 79, 80, 81 | 3d |  | Matthew Chiam | 32h |
| 99 | 8.4.2 | Create ROS Services | 4d | 2014-08-17 | 2014-08-20 | 73, 74, 75, 76, 77, 78, 79, 80, 81 | 3d |  | Matthew Chiam | 32h |
| 100 | 8.4.3 | Create ROS Messages | 4d | 2014-08-17 | 2014-08-20 | 73, 74, 75, 76, 77, 78, 79, 80, 81 | 3d |  | Akshay Kalyan | 32h |
| 101 | 8.5 | **Integration Between World And Robots** | 2d | 2014-08-24 | 2014-08-25 |  | 0d |  |  | 16h |
| 102 | 8.5.1 | Integration Between World And Robots | 2d | 2014-08-24 | 2014-08-25 | 83, 84, 85, 86, 87, 88, 89, 90, 92, 99, 100, 94, 95, 96, 98, 91 | 0d |  | Michael Shafer | 16h |
| 103 | 8.6 | **Build Tasks** | 3d | 2014-08-17 | 2014-08-19 |  | 6d |  |  | 56h |
| 104 | 8.6.1 | Create Build Scripts | 2d | 2014-08-17 | 2014-08-18 | 83SS, 84SS, 85SS, 86SS, 87SS, 88SS, 89SS, 90SS, 92SS, 91SS | 6d | 0d | Michael Shafer | 16h |
| 105 | 8.6.2 | Test Build Scripts | 2d | 2014-08-17 | 2014-08-18 | 104SS | 6d | 0d | Michael Shafer | 16h |
| 106 | 8.6.3 | Run/Launch Build Scripts | 1d | 2014-08-19 | 2014-08-19 | 105 | 6d |  | James Butler | 8h |
| 107 | 8.6.4 | Create Convenience Scripts | 2d | 2014-08-17 | 2014-08-18 | 104SS | 7d |  | Hugo Bateman | 16h |

| ID | WBS | Task | Type | Duration | Start | Finish | Predecessors | Total slack | Resources | Work |
| --- | --- | --- | --- | --- | --- | --- | --- | --- | --- | --- |
| 108 | 8.7 | **Acceptance Testing** |  | 3d | 2014-08-26 | 2014-08-28 |  | 0d |  | 24h |
| 109 | 8.7.1 | Acceptance Testing Final Version |  | 3d | 2014-08-26 | 2014-08-28 | 102, 106, 107 | 0d | Team | 24h |
| 110 | 9 | Final Release | milestone, manual | 0d | 2014-08-29 | 2014-08-29 | 109 |  |  |  |
| 111 | 10 | End | milestone | 0d | 2014-08-29 | 2014-08-29 | 110 | 0d |  |  |
